# Software Biblioteca

Schedule from MS Project, 2018-04-09 to 2018-06-16, 2 hours a day, costs in €, A marks actual dates.

## Calendars

- Standard: Mon-Tue 13:30-15:30; Wed 09:00-12:30; Thu-Sun off. Exceptions (off unless hours are given): 2018-04-11 (não trabalhamos), 2018-05-21 15:30-20:00 (Horas extra), 2018-05-22 11:30-13:00 (Horas extra).

## Resources

| Resource | Group | Rate |
| --- | --- | --- |
| Flávio | RH | 5 |
| André | RH | 5 |
| Carlota | RH | 5 |
| Rodrigo | RH | 5 |

## Schedule

| ID | WBS | Task | Type | Duration | Start | Finish | Predecessors | Complete | Baseline start | Baseline finish | Baseline duration | Constraint | Resources | Work | Actual work | Cost | Baseline cost | Actual cost | Acção |
| --- | --- | --- | --- | --- | --- | --- | --- | --- | --- | --- | --- | --- | --- | --- | --- | --- | --- | --- | --- |
| 1 | 1 | **Planeamento** |  | 16.5d | 2018-04-09 08:00 A | 2018-05-09 11:30 A |  | 100% | 2018-04-09 08:00 | 2018-05-09 11:30 | 16.5d |  |  | 39.77h | 39.77h | 198.83 | 198.83 | 198.83 |  |
| 2 | 1.1 | Microsoft Project |  | 33h | 2018-04-09 13:30 A | 2018-05-09 11:30 A |  | 100% | 2018-04-09 13:30 | 2018-05-09 11:30 | 33h | start no earlier than 2018-04-09 08:00 | Flávio [70%]; André [10%] | 7.87h | 7.87h | 39.33 | 39.33 | 39.33 | mais tempo |
| 3 | 1.2 | **Relatório Requisitos** |  | 6.75d | 2018-04-09 08:00 A | 2018-04-23 15:30 A |  | 100% | 2018-04-09 08:00 | 2018-04-23 15:30 | 6.75d |  |  | 14.9h | 14.9h | 74.5 | 74.5 | 74.5 |  |
| 4 | 1.2.1 | Investigação no terreno |  | 0.5h | 2018-04-09 13:30 A | 2018-04-09 14:00 A |  | 100% | 2018-04-09 13:30 | 2018-04-09 14:00 | 0.5h |  | Flávio | 0.5h | 0.5h | 2.5 | 2.5 | 2.5 |  |
| 5 | 1.2.2 | Introdução |  | 5h | 2018-04-09 08:00 A | 2018-04-16 14:30 A | 4 | 100% | 2018-04-09 08:00 | 2018-04-16 14:30 | 5h |  | André [40%]; Flávio [60%] | 4h | 4h | 20 | 20 | 20 |  |
| 6 | 1.2.3 | Requisitos Funcionais |  | 9h | 2018-04-10 13:30 A | 2018-04-18 10:00 A | 4 | 100% | 2018-04-10 13:30 | 2018-04-18 10:00 | 9h | start no earlier than 2018-04-10 08:00 | André [60%]; Flávio [40%] | 7.5h | 7.5h | 37.5 | 37.5 | 37.5 | mais rh e mais tempo |
| 7 | 1.2.4 | Requisitos Não Funcionais |  | 2h | 2018-04-18 08:00 A | 2018-04-18 11:30 A | 4 | 100% | 2018-04-18 08:00 | 2018-04-18 11:30 | 2h | start no earlier than 2018-04-18 08:00 | André [90%]; Flávio [10%] | 0.5h | 0.5h | 2.5 | 2.5 | 2.5 | mais rh |
| 8 | 1.2.5 | Diagrama Casos de Uso |  | 2h | 2018-04-23 13:30 A | 2018-04-23 15:30 A | 6, 7 | 100% | 2018-04-23 13:30 | 2018-04-23 15:30 | 2h | start no earlier than 2018-04-23 08:00 | André; Flávio [10%]; Rodrigo [10%] | 2.4h | 2.4h | 12 | 12 | 12 |  |
| 9 | 1.3 | **Relatório Planeamento** |  | 2.75d | 2018-04-17 08:00 A | 2018-04-18 12:30 A |  | 100% | 2018-04-17 08:00 | 2018-04-18 12:30 | 2.75d |  |  | 6h | 6h | 30 | 30 | 30 |  |
| 10 | 1.3.1 | Planificação Geral do Projeto |  | 2h | 2018-04-18 09:00 A | 2018-04-18 11:00 A |  | 100% | 2018-04-18 09:00 | 2018-04-18 11:00 | 2h | start no earlier than 2018-04-18 08:00 | André [50%]; Flávio [50%] | 2h | 2h | 10 | 10 | 10 | mais rh |
| 11 | 1.3.2 | Plano de riscos |  | 3h | 2018-04-18 09:30 A | 2018-04-18 12:30 A |  | 100% | 2018-04-18 09:30 | 2018-04-18 12:30 | 3h | start no earlier than 2018-04-18 08:00 | Flávio [50%]; André [50%]; Rodrigo [20%] | 2h | 2h | 10 | 10 | 10 | mais rh e mais tempo |
| 12 | 1.3.3 | Matriz de Responsabilidades |  | 2h | 2018-04-17 08:00 A | 2018-04-17 17:00 A |  | 100% | 2018-04-17 08:00 | 2018-04-17 17:00 | 2h | start no earlier than 2018-04-17 08:00 | Flávio [90%]; André [10%] | 2h | 2h | 10 | 10 | 10 |  |
| 13 | 1.4 | **Relatório Scrum** |  | 2d | 2018-05-08 13:30 A | 2018-05-09 11:00 A |  | 100% | 2018-05-08 13:30 | 2018-05-09 11:00 | 2d |  |  | 11h | 11h | 55 | 55 | 55 |  |
| 14 | 1.4.1 | Introdução |  | 0.5h | 2018-05-08 13:30 A | 2018-05-08 14:00 A |  | 100% | 2018-05-08 13:30 | 2018-05-08 14:00 | 0.5h | start no earlier than 2018-05-08 08:00 | André | 0.5h | 0.5h | 2.5 | 2.5 | 2.5 |  |
| 15 | 1.4.2 | stakeholders |  | 0.5h | 2018-05-08 13:30 A | 2018-05-08 14:00 A |  | 100% | 2018-05-08 13:30 | 2018-05-08 14:00 | 0.5h | start no earlier than 2018-05-08 08:00 | André | 0.5h | 0.5h | 2.5 | 2.5 | 2.5 |  |
| 16 | 1.4.3 | Product Backlog |  | 4h | 2018-05-08 13:30 A | 2018-05-09 11:00 A | 3, 9 | 100% | 2018-05-08 13:30 | 2018-05-09 11:00 | 4h | start no earlier than 2018-05-08 08:00 | André; Flávio | 8h | 8h | 40 | 40 | 40 | mais rh |
| 17 | 1.4.4 | Sprints |  | 2h | 2018-05-08 13:30 A | 2018-05-08 15:30 A | 3, 9 | 100% | 2018-05-08 13:30 | 2018-05-08 15:30 | 2h | start no earlier than 2018-05-08 08:00 | André; Flávio; Carlota | 2h | 2h | 10 | 10 | 10 |  |
| 18 | 1.5 | Conclusão do planeamento | milestone | 0d | 2018-05-09 11:30 A | 2018-05-09 11:30 A | 2, 3, 9, 13 | 100% | 2018-05-09 11:30 | 2018-05-09 11:30 | 0d |  |  |  |  |  |  |  |  |
| 19 | 2 | **Sprint 1** |  | 16.75d | 2018-04-25 08:00 A | 2018-05-23 10:30 A |  | 100% | 2018-04-25 08:00 | 2018-05-30 10:18 | 19.4d |  |  | 87.55h | 87.55h | 437.75 | 377.75 | 437.75 |  |
| 20 | 2.1 | **Investigação javafx** |  | 12.25d | 2018-04-25 08:00 A | 2018-05-16 11:00 A |  | 100% | 2018-04-25 08:00 | 2018-05-16 11:00 | 12.25d |  |  | 19.7h | 19.7h | 98.5 | 98.5 | 98.5 |  |
| 21 | 2.1.1 | criação tabelas |  | 6h | 2018-04-25 08:00 A | 2018-05-01 14:00 A |  | 100% | 2018-04-25 08:00 | 2018-05-01 14:00 | 6h | start no earlier than 2018-04-25 08:00 | André; Flávio; Rodrigo | 7.2h | 7.2h | 36 | 36 | 36 | mais rh e mais tempo |
| 22 | 2.1.2 | adicionar campos tabela |  | 0.5h | 2018-05-01 14:00 A | 2018-05-01 14:30 A | 21 | 100% | 2018-05-01 14:00 | 2018-05-01 14:30 | 0.5h |  | Flávio | 0.5h | 0.5h | 2.5 | 2.5 | 2.5 | mais rh e mais tempo |
| 23 | 2.1.3 | editar campos tabela |  | 4h | 2018-05-14 13:30 A | 2018-05-15 15:30 A |  | 100% | 2018-05-14 13:30 | 2018-05-15 15:30 | 4h | start no earlier than 2018-05-14 08:00 | Flávio; André | 8h | 8h | 40 | 40 | 40 | mais rh e mais tempo |
| 24 | 2.1.4 | apagar campos tabela |  | 2h | 2018-05-16 09:00 A | 2018-05-16 11:00 A | 23 | 100% | 2018-05-16 09:00 | 2018-05-16 11:00 | 2h |  | Flávio; André; Carlota | 4h | 4h | 20 | 20 | 20 | mais rh e mais tempo |

| ID | WBS | Task | Type | Duration | Start | Finish | Predecessors | Complete | Remaining | Baseline start | Baseline finish | Baseline duration | Total slack | Free slack | Constraint | Resources | Work | Actual work | Cost | Baseline cost | Actual cost | Acção |
| --- | --- | --- | --- | --- | --- | --- | --- | --- | --- | --- | --- | --- | --- | --- | --- | --- | --- | --- | --- | --- | --- | --- |
| 25 | 2.2 | **Tabelas** |  | 13d | 2018-05-01 14:00 A | 2018-05-22 14:30 A |  | 100% |  | 2018-05-01 14:00 | 2018-05-22 14:30 | 11.5d |  |  |  |  | 27.25h | 27.25h | 136.25 | 136.25 | 136.25 |  |
| 26 | 2.2.1 | criar tabela utilizadores comuns |  | 1h | 2018-05-01 14:00 A | 2018-05-01 15:00 A | 21 | 100% |  | 2018-05-01 14:00 | 2018-05-01 15:00 | 1h |  |  | start no earlier than 2018-04-30 08:00 | Flávio | 1h | 1h | 5 | 5 | 5 |  |
| 27 | 2.2.2 | criar tabela livros |  | 1.5h | 2018-05-14 13:30 A | 2018-05-14 15:00 A | 26 | 100% |  | 2018-05-14 13:30 | 2018-05-14 15:00 | 1.5h |  |  | start no earlier than 2018-05-14 08:00 | Flávio | 1.5h | 1.5h | 7.5 | 7.5 | 7.5 |  |
| 28 | 2.2.3 | criar tabela requisições |  | 0.5h | 2018-05-14 15:00 A | 2018-05-14 15:30 A | 27 | 100% |  | 2018-05-14 15:00 | 2018-05-14 15:30 | 0.5h |  |  |  | Flávio | 0.5h | 0.5h | 2.5 | 2.5 | 2.5 |  |
| 29 | 2.2.4 | Registar utilizadores comuns |  | 2h | 2018-05-15 13:30 A | 2018-05-15 15:30 A | 22, 28 | 100% |  | 2018-05-15 13:30 | 2018-05-15 15:30 | 2h |  |  |  | Carlota [10%]; André; Flávio | 4.2h | 4.2h | 21 | 21 | 21 |  |
| 30 | 2.2.5 | Registar livro |  | 3h | 2018-05-15 08:00 A | 2018-05-16 10:00 A | 27, 29 | 100% |  | 2018-05-15 08:00 | 2018-05-16 10:00 | 3h |  |  |  | André; Flávio | 6h | 6h | 30 | 30 | 30 |  |
| 31 | 2.2.6 | editar linhas tabelas |  | 8h | 2018-05-16 09:00 A | 2018-05-19 14:00 A | 23 | 100% |  | 2018-05-16 09:00 | 2018-05-19 14:00 | 8h |  |  |  | Rodrigo [50%]; Flávio; Carlota [20%] | 9.05h | 9.05h | 45.25 | 45.25 | 45.25 |  |
| 32 | 2.2.7 | apagar linhas tabelas |  | 5h | 2018-05-19 16:00 A | 2018-05-22 14:30 A | 24, 31 | 100% |  | 2018-05-19 16:00 | 2018-05-22 14:30 | 5h |  |  |  | Flávio; Carlota; Rodrigo | 5h | 5h | 25 | 25 | 25 |  |
| 33 | 2.3 | Janela de Informação |  | 2h | 2018-05-09 11:30 A | 2018-05-14 14:30 A | 1 | 100% |  | 2018-05-09 11:30 | 2018-05-14 14:30 | 2h |  |  |  | André; Flávio; Rodrigo | 3.6h | 3.6h | 18 | 18 | 18 |  |
| 34 | 2.4 | Registo de requisições |  | 6h | 2018-05-16 08:00 A | 2018-05-21 18:00 A | 26, 27, 28, 29, 30 | 100% |  | 2018-05-16 08:00 | 2018-05-28 14:48 | 6h |  |  | finish no earlier than 2018-05-16 10:00 | Flávio; Carlota; André; Rodrigo | 24h | 24h | 120 | 60 | 120 | mais rh e mais tempo |
| 35 | 2.5 | Devolução de requisições |  | 2h | 2018-05-21 08:00 A | 2018-05-21 17:30 A | 34 | 100% |  | 2018-05-28 13:48 | 2018-05-29 13:48 | 2h |  |  |  | Carlota; Flávio [50%] | 4h | 4h | 20 | 20 | 20 |  |
| 36 | 2.6 | Edição de requisições |  | 3h | 2018-05-22 08:00 A | 2018-05-23 10:30 A | 35 | 100% |  | 2018-05-29 13:48 | 2018-05-30 10:18 | 3h |  |  | finish no earlier than 2018-05-22 10:00 | Rodrigo; Flávio | 6h | 6h | 30 | 30 | 30 |  |
| 37 | 2.7 | pesquisa de requisições por aluno |  | 2h | 2018-05-21 08:00 A | 2018-05-21 15:30 A | 27 | 100% |  | 2018-05-21 08:00 | 2018-05-21 15:30 | 2h |  |  |  | Flávio | 2h | 2h | 10 | 10 | 10 |  |
| 38 | 2.8 | pesquisa de requisições por livro |  | 1h | 2018-05-21 08:00 A | 2018-05-21 14:30 A | 27 | 100% |  | 2018-05-21 08:00 | 2018-05-21 14:30 | 1h |  |  |  | Flávio | 1h | 1h | 5 | 5 | 5 |  |
| 39 | 3 | Reunião 22/5 | manual | 2h | 2018-05-22 08:00 A | 2018-05-22 10:00 A |  | 100% |  | 2018-05-22 08:00 | 2018-05-22 10:00 | 2h |  |  |  |  |  |  |  |  |  |  |
| 40 | 4 | Conclusão Sprint 1 | milestone | 0d | 2018-05-22 10:00 A | 2018-05-22 10:00 A | 39 | 100% |  | 2018-05-22 10:00 | 2018-05-22 10:00 | 0d |  |  |  |  |  |  |  |  |  |  |
| 41 | 5 | **Sprint 2** |  | 11d? | 2018-05-22 08:00 A | 2018-06-12 08:00 |  | 94% | 0.7d? | 2018-05-15 08:00 | 2018-06-12 16:00 | 16d | 2.75d |  |  |  | 37h | 35h | 185 | 222.5 | 175 |  |
| 42 | 5.1 | Atualizar relatório de Requisitos (com os novos adquiridos através da reunião) |  | 4h | 2018-05-22 11:30 A | 2018-05-23 09:30 A | 40 | 100% |  |  |  |  |  |  |  | André; Flávio | 4h | 4h | 20 |  | 20 | mais rh |
| 43 | 5.2 | Atualizar outros relatórios |  | 1h | 2018-05-22 13:30 A | 2018-05-22 14:30 A | 40 | 100% |  |  |  |  |  |  |  | André | 1h | 1h | 5 |  | 5 |  |
| 44 | 5.3 | **save/load** |  | 3.5d | 2018-05-30 08:00 A | 2018-06-05 15:00 A |  | 100% |  | 2018-05-22 13:30 | 2018-05-29 15:00 | 4.5d |  |  |  |  | 7.5h | 7.5h | 37.5 | 75 | 37.5 |  |
| 45 | 5.3.1 | Save state .bin |  | 1.5h | 2018-05-30 08:00 A | 2018-05-30 10:30 A | 40 | 100% |  | 2018-05-22 13:30 | 2018-05-22 15:00 | 1.5h |  |  |  | Flávio | 1.5h | 1.5h | 7.5 | 7.5 | 7.5 |  |
| 46 | 5.3.2 | load state .bin |  | 1h | 2018-05-30 08:00 A | 2018-05-30 10:00 A | 45 | 100% |  | 2018-05-22 15:00 | 2018-05-23 10:00 | 1.5h |  |  |  | Flávio | 1h | 1h | 5 | 7.5 | 5 |  |
| 47 | 5.3.3 | importar tabelas .csv |  | 2h | 2018-06-04 15:00 A | 2018-06-05 15:00 A | 48 | 100% |  | 2018-05-23 10:00 | 2018-05-28 14:00 | 3h |  |  |  | Flávio; Rodrigo | 4h | 4h | 20 | 30 | 20 |  |
| 48 | 5.3.4 | exportar tabelas .csv |  | 1h | 2018-06-04 14:00 A | 2018-06-04 15:00 A | 46 | 100% |  | 2018-05-28 14:00 | 2018-05-29 15:00 | 3h |  |  |  | Rodrigo | 1h | 1h | 5 | 30 | 5 |  |
| 49 | 5.4 | criar tabela funcionarios/admins |  | 4h | 2018-05-22 11:30 A | 2018-05-23 09:30 A | 40 | 100% |  | 2018-05-22 13:30 | 2018-05-22 14:30 | 2h |  |  |  | André; Flávio | 4h | 4h | 20 | 10 | 20 |  |
| 50 | 5.5 | bloquear falta de permissões |  | 1.5h | 2018-06-05 15:00 A | 2018-06-06 10:00 A | 60, 44 | 100% |  | 2018-05-29 15:00 | 2018-06-11 14:00 | 12h |  |  |  | André; Flávio; Rodrigo | 3h | 3h | 15 | 120 | 15 | mais rh e mais tempo |
| 51 | 5.6 | Ocultar colunas nas pesquisas a pedido do utilizador |  | 0.5h | 2018-05-22 08:00 A | 2018-05-22 14:00 A | 40 | 100% |  | 2018-05-15 08:00 | 2018-05-15 14:00 | 0.5h |  |  | start no earlier than 2018-05-15 08:00 | Flávio | 0.5h | 0.5h | 2.5 | 2.5 | 2.5 |  |
| 52 | 5.7 | Validar NIF segundo formula oficial e não deixar nifs iguais |  | 1.5h | 2018-05-22 10:00 A | 2018-05-22 13:00 A | 40 | 100% |  |  |  |  |  |  |  | André; Rodrigo | 1.5h | 1.5h | 7.5 |  | 7.5 | mais rh |
| 53 | 5.8 | Adicionar coluna "dias em atraso" |  | 2h | 2018-05-22 11:30 A | 2018-05-23 09:30 A | 40 | 100% |  |  |  |  |  |  |  | Flávio; Rodrigo | 3h | 3h | 15 |  | 15 |  |
| 54 | 5.9 | Tipo de Utilizador (aluno, func ou docente) - Nova coluna |  | 1.5h | 2018-05-22 11:30 A | 2018-05-22 13:00 A | 40 | 100% |  |  |  |  |  |  |  | Flávio; Rodrigo | 2h | 2h | 10 |  | 10 |  |
| 55 | 5.10 | Listagem por entregas (ordenar por mais antigo) |  | 1h | 2018-05-23 09:30 A | 2018-05-23 10:30 A | 53 | 100% |  |  |  |  |  |  |  | Flávio | 1h | 1h | 5 |  | 5 |  |
| 56 | 5.11 | Pesquisar por nome e outros campos (fazer o menu) |  | 1d? | 2018-05-22 13:30 | 2018-05-22 15:30 | 40 |  |  |  |  |  | 12d |  |  | André | 2h |  | 10 |  |  |  |
| 57 | 5.12 | Bloquear utilizadores que tenham livros por entregar |  | 2h | 2018-05-30 08:00 A | 2018-05-30 11:00 A | 40 | 100% |  |  |  |  |  |  |  | Flávio | 2h | 2h | 10 |  | 10 |  |
| 58 | 5.13 | Alerta de utilizadores com x dias em atraso (a pedir o x) |  | 1d | 2018-06-06 08:00 A | 2018-06-06 11:00 A | 53, 45, 46 | 100% |  |  |  |  |  |  |  | Flávio | 2h | 2h | 10 |  | 10 |  |
| 59 | 5.14 | Definir multas, x por dia (a pedir x) |  | 1h | 2018-05-23 09:30 A | 2018-05-23 10:30 A | 53 | 100% |  |  |  |  |  |  |  | Flávio | 1h | 1h | 5 |  | 5 |  |
| 60 | 5.15 | Login |  | 1.5h | 2018-06-06 08:00 A | 2018-06-06 10:30 A | 40 | 100% |  | 2018-05-22 13:30 | 2018-05-22 15:30 | 2h |  |  |  | André | 1.5h | 1.5h | 7.5 | 15 | 7.5 | mais tempo |
| 61 | 5.16 | Confirmação sair |  | 0.5h | 2018-06-06 08:00 A | 2018-06-06 09:30 A | 45 | 100% |  |  |  |  |  |  |  | Flávio; Rodrigo | 1h | 1h | 5 |  | 5 |  |
| 62 | 5.17 | Reunião 12/6 | milestone, manual | 0d | 2018-06-12 08:00 | 2018-06-12 08:00 |  |  |  | 2018-06-12 08:00 | 2018-06-12 16:00 | 4d |  |  |  |  |  |  |  |  |  |  |
| 63 | 5.18 | Conclusão sprint 2 | milestone | 0d | 2018-06-12 08:00 | 2018-06-12 08:00 | 62 |  |  | 2018-06-12 16:00 | 2018-06-12 16:00 | 0d | 0.25d | 0d |  |  |  |  |  |  |  |  |
| 64 | 6 | Relatórios Finais |  | 5h? | 2018-06-12 13:30 | 2018-06-13 12:00 | 63 |  |  |  |  |  | 0.25d |  |  | Flávio; André | 10h |  | 50 |  |  |  |
| 65 | 7 | Conclusão do projeto | milestone | 0d | 2018-06-16 17:00 | 2018-06-16 17:00 | 64 |  |  | 2018-06-13 09:00 | 2018-07-04 10:30 | 12d | 0d |  | finish no earlier than 2018-06-16 17:00 |  |  |  |  |  |  |  |
